# Analytics and Prediction System for CE Curriculum administrators GanttChart

Schedule from MS Project, 2022-08-01 to 2023-03-15, 2 hours a day, A marks actual dates.

## Calendars

- Standard: Mon-Sun 19:00-21:00.

## Resources

| Resource |
| --- |
| 62010465 |
| 62010299 |

## Schedule

| ID | WBS | Task | Type | Duration | Start | Finish | Predecessors | Complete | Remaining | Baseline start | Baseline finish | Baseline duration | Baseline 1 start | Baseline 1 finish | Total slack | Resources | Work | Actual work |
| --- | --- | --- | --- | --- | --- | --- | --- | --- | --- | --- | --- | --- | --- | --- | --- | --- | --- | --- |
| 1 | 1 | ศึกษาทฤษฎีที่เกี่ยวข้อง | manual | 30d | 2022-08-01 A | 2022-08-31 |  | 75% | 7.5d | 2022-08-01 | 2022-08-31 | 30d | 2022-08-01 | 2022-08-31 |  | 62010299 [50%]; 62010465 [50%] | 105h | 90h |
| 2 | 2 | **เตรียม Docker** |  | 8d | 2022-09-01 A | 2022-09-08 A |  | 100% |  |  |  |  |  |  |  | 62010465 | 16h | 16h |
| 3 | 2.2 | Docker Image สำหรับ Django | manual | 3d | 2022-09-01 A | 2022-09-03 A |  | 100% |  | 2022-09-01 | 2022-09-03 | 3d | 2022-09-01 | 2022-09-03 |  |  |  |  |
| 4 | 2.3 | Docker Image สำหรับ MariaDB | manual | 3d | 2022-09-03 A | 2022-09-05 A |  | 100% |  | 2022-09-03 | 2022-09-05 | 3d | 2022-09-03 | 2022-09-05 |  |  |  |  |
| 5 | 2.4 | Docker Image สำหรับ React | manual | 2d | 2022-09-06 A | 2022-09-07 A |  | 100% |  | 2022-09-06 | 2022-09-07 | 2d | 2022-09-06 | 2022-09-07 |  |  |  |  |
| 6 | 2.5 | Compose Image Django และ MariaDB | manual | 1d | 2022-09-07 A | 2022-09-07 A | 3, 4 | 100% |  | 2022-09-07 | 2022-09-07 | 1d | 2022-09-07 | 2022-09-07 |  |  |  |  |
| 7 | 2.6 | Compose Image React | manual | 1d | 2022-09-08 A | 2022-09-08 A | 5 | 100% |  | 2022-09-08 | 2022-09-08 | 1d | 2022-09-08 | 2022-09-08 |  |  |  |  |
| 8 | 3 | **เตรียม Server** |  | 7d | 2022-09-01 A | 2022-09-07 |  | 50% | 3.5d |  |  |  |  |  | 0d | 62010299 | 14h | 7h |
| 9 | 3.1 | ติดตั้ง Maria DB | manual | 2d | 2022-09-01 A | 2022-09-02 A |  | 100% |  | 2022-09-01 | 2022-09-02 | 2d | 2022-09-01 | 2022-09-02 |  |  |  |  |
| 10 | 3.2 | ติดตั้ง Python | manual | 0.5d | 2022-09-03 A | 2022-09-03 A |  | 100% |  | 2022-09-03 | 2022-09-04 | 2d | 2022-09-03 | 2022-09-04 |  |  |  |  |
| 11 | 3.3 | ติดตั้ง Django Framework | manual | 2d | 2022-09-05 A | 2022-09-06 |  | 13% | 1.75d | 2022-09-05 | 2022-09-06 | 2d | 2022-09-05 | 2022-09-06 |  |  |  |  |
| 12 | 3.4 | ติดตั้ง React | manual | 1d | 2022-09-07 | 2022-09-07 |  |  |  | 2022-09-07 | 2022-09-07 | 1d | 2022-09-07 | 2022-09-07 |  |  |  |  |
| 13 | 4 | **เตรียม Data สำหรับการพัฒนา** |  | 9d | 2022-09-08 A | 2022-09-16 |  | 89% | 0.96d |  |  |  |  |  |  | 62010299 | 18h | 18h |
| 14 | 4.1 | ออกแบบ Schema | manual | 3d | 2022-09-08 A | 2022-09-10 A |  | 100% |  | 2022-09-08 | 2022-09-10 | 3d | 2022-09-08 | 2022-09-10 |  |  |  |  |
| 15 | 4.2 | ออกแบบ Relational Database | manual | 3d | 2022-09-11 A | 2022-09-13 A |  | 100% |  | 2022-09-11 | 2022-09-13 | 3d | 2022-09-11 | 2022-09-13 |  |  |  |  |
| 16 | 4.3 | นำข้อมูลเข้า Database | manual | 0.5d | 2022-09-14 A | 2022-09-14 | 14, 15 | 75% | 0.12d | 2022-09-14 | 2022-09-14 | 1d | 2022-09-14 | 2022-09-14 |  |  |  |  |
| 17 | 4.4 | Clean Data | manual | 2d | 2022-09-14 A | 2022-09-15 |  | 75% | 0.5d | 2022-09-14 | 2022-09-14 | 1d | 2022-09-14 | 2022-09-14 |  |  |  |  |
| 18 | 4.5 | Transfrom Data | manual | 2d | 2022-09-15 A | 2022-09-16 |  | 75% | 0.5d | 2022-09-15 | 2022-09-15 | 1d | 2022-09-15 | 2022-09-15 |  |  |  |  |
| 19 | 5 | **พัฒนา Function NLP สำหรับจับกลุ่มวิชา** |  | 22d | 2022-09-09 A | 2022-09-30 A |  | 100% |  |  |  |  |  |  |  | 62010299 | 44h | 44h |
| 20 | 5.1 | ศึกษา NLP และทดลองใช้งาน | manual | 5d | 2022-09-09 A | 2022-09-13 A |  | 100% |  |  |  |  |  |  |  |  |  |  |
| 21 | 5.2 | พัฒนา NLP สำหรับจับกลุ่ม วิชาบังคับ และ วิชาเลือกภาค | manual | 7d | 2022-09-14 A | 2022-09-20 A | 20 | 100% |  |  |  |  |  |  |  |  |  |  |
| 22 | 5.3 | Test Function NLP and Tuning | manual | 10d | 2022-09-21 A | 2022-09-30 A | 21 | 100% |  |  |  |  |  |  |  |  |  |  |
| 23 | 6 | **พัฒนา Similarity Model** |  | 38d | 2022-09-08 A | 2022-10-15 A |  | 100% |  |  |  |  |  |  |  | 62010465 | 76h | 76h |
| 24 | 6.1 | ทดลองใช้งาน Surprise Scikit learn | manual | 15d | 2022-09-08 A | 2022-09-22 A |  | 100% |  | 2022-09-08 | 2022-09-22 | 15d | 2022-09-08 | 2022-09-22 |  |  |  |  |
| 25 | 6.2 | พัฒนา Model Similarity รุ่น prototype | manual | 8d | 2022-09-23 A | 2022-09-30 A | 24 | 100% |  | 2022-09-23 | 2022-09-30 | 8d | 2022-09-23 | 2022-09-30 |  |  |  |  |
| 26 | 6.3 | พัฒนา Model Similarity รุ่น Optimized | manual | 10d | 2022-09-30 A | 2022-10-09 A | 24 | 100% |  | 2022-09-23 | 2022-09-30 | 8d | 2022-09-23 | 2022-09-30 |  |  |  |  |
| 27 | 6.4 | Test Model | manual | 6d | 2022-10-10 A | 2022-10-15 A | 25, 26 | 100% |  | 2022-10-10 | 2022-10-15 | 6d | 2022-10-10 | 2022-10-15 |  |  |  |  |

| ID | WBS | Task | Type | Duration | Start | Finish | Predecessors | Complete | Remaining | Baseline start | Baseline finish | Baseline duration | Baseline 1 start | Baseline 1 finish | Total slack | Constraint | Deadline | Resources | Work | Actual work |
| --- | --- | --- | --- | --- | --- | --- | --- | --- | --- | --- | --- | --- | --- | --- | --- | --- | --- | --- | --- | --- |
| 28 | 7 | **พัฒนา Job Classification Model** |  | 31d | 2022-10-16 A | 2022-11-15 |  | 95% | 1.55d |  |  |  |  |  | 0d | finish no later than 2022-11-15 | 2022-11-15 | 62010299 | 62h | 58.9h |
| 29 | 7.1 | ทดลอง Model KNN และ Decision Tree | manual | 16d | 2022-10-16 A | 2022-10-31 A |  | 100% |  | 2022-10-16 | 2022-11-01 | 17d | 2022-10-16 | 2022-11-01 |  |  |  |  |  |  |
| 30 | 7.2 | พัฒนา Model Classification | manual | 8d | 2022-11-02 A | 2022-11-09 A | 29 | 100% |  | 2022-11-02 | 2022-11-09 | 8d | 2022-11-02 | 2022-11-09 |  |  |  |  |  |  |
| 31 | 7.3 | Test Model | manual | 6d | 2022-11-10 A | 2022-11-15 | 30 | 75% | 1.5d | 2022-11-10 | 2022-11-15 | 6d | 2022-11-10 | 2022-11-15 |  |  |  |  |  |  |
| 32 | 8 | **พัฒนา Django Web App** |  | 151d | 2022-10-16 A | 2023-03-15 |  | 8% | 138.31d |  |  |  |  |  | 0d | finish no later than 2023-03-15 | 2023-03-15 |  | 349.76h | 36.04h |
| 33 | 8.1 | **พัฒนา Backend Function** |  | 90d | 2022-10-16 A | 2023-01-13 |  | 15% | 76.36d |  |  |  |  |  | 0d |  |  | 62010465 | 180h | 27.27h |
| 34 | 8.1.1 | พัฒนา Function Map Subject Group | manual | 6d | 2022-12-15 A | 2022-12-20 |  | 50% | 3d | 2022-12-15 | 2022-12-20 | 6d | 2022-12-15 | 2022-12-20 |  |  |  |  |  |  |
| 35 | 8.1.2 | พัฒนา Call Fuction similarity หลักสูตรปกติ | manual | 4d | 2022-10-16 A | 2022-10-19 |  | 25% | 3d | 2022-10-16 | 2022-10-19 | 4d | 2022-10-16 | 2022-10-19 |  |  |  |  |  |  |
| 36 | 8.1.3 | พัฒนา Call Fuction similarity หลักสูตรต่อเนื่อง | manual | 4d | 2022-10-16 A | 2022-10-19 |  | 25% | 3d | 2022-10-16 | 2022-10-19 | 4d | 2022-10-16 | 2022-10-19 |  |  |  |  |  |  |
| 37 | 8.1.4 | พัฒนา Function Analytic Data | manual | 13d | 2022-12-26 | 2023-01-07 |  |  |  | 2022-12-26 | 2023-01-07 | 13d | 2022-12-26 | 2023-01-07 |  |  |  |  |  |  |
| 38 | 8.1.5 | พัฒนา Function Sum Occupations | manual | 3d | 2023-01-08 | 2023-01-10 |  |  |  | 2023-01-08 | 2023-01-10 | 3d | 2023-01-08 | 2023-01-10 |  |  |  |  |  |  |
| 39 | 8.1.6 | พัฒนา Function Recommend Elective Subject | manual | 3d | 2023-01-11 | 2023-01-13 |  |  |  | 2023-01-11 | 2023-01-13 | 3d | 2023-01-11 | 2023-01-13 |  |  |  |  |  |  |
| 40 | 8.2 | **พัฒนา API** |  | 32d | 2022-12-15 A | 2023-01-15 |  | 14% | 27.5d |  |  |  |  |  | 0d |  |  | 62010299 | 63.77h | 8.77h |
| 41 | 8.2.1 | พัฒนา API Simple CSV Generator | manual | 6d | 2022-12-15 A | 2022-12-20 |  | 75% | 1.5d | 2022-12-15 | 2022-12-22 | 8d | 2022-12-15 | 2022-12-22 |  |  |  |  |  |  |
| 42 | 8.2.2 | พัฒนา API Request All Prediction Handler | manual | 8d | 2022-12-26 | 2023-01-02 | 35, 36 |  |  | 2022-12-26 | 2023-01-02 | 8d | 2022-12-26 | 2023-01-02 |  |  |  |  |  |  |
| 43 | 8.2.3 | พัฒนา API Request All Outcome Predict of All Student | manual | 1d | 2023-01-03 | 2023-01-03 | 42 |  |  | 2023-01-03 | 2023-01-03 | 1d | 2023-01-03 | 2023-01-03 |  |  |  |  |  |  |
| 44 | 8.2.4 | พัฒนา API Calculate overall (old) Outcome | manual | 4d | 2022-12-31 | 2023-01-03 |  |  |  | 2022-12-31 | 2023-01-03 | 4d | 2022-12-31 | 2023-01-03 |  |  |  |  |  |  |
| 45 | 8.2.5 | พัฒนา API Request Elective Subject | manual | 4d | 2023-01-05 | 2023-01-08 | 35, 36 |  |  | 2023-01-05 | 2023-01-08 | 4d | 2023-01-05 | 2023-01-08 |  |  |  |  |  |  |
| 46 | 8.2.6 | พัฒนา API Add Update Edit | manual | 5d | 2023-01-08 | 2023-01-12 |  |  |  | 2023-01-08 | 2023-01-12 | 5d | 2023-01-08 | 2023-01-12 |  |  |  |  |  |  |
| 47 | 8.2.7 | พัฒนา API Login Handler | manual | 4d | 2023-01-12 | 2023-01-15 |  |  |  | 2023-01-12 | 2023-01-15 | 4d | 2023-01-12 | 2023-01-15 |  |  |  |  |  |  |
| 48 | 8.3 | **พัฒนา Frontend** |  | 20d | 2023-01-19 | 2023-02-07 |  |  |  |  |  |  |  |  | 0d |  |  | 62010299 | 40h |  |
| 49 | 8.3.1 | พัฒนาหน้าการใช้งานสำหรับบุคคทั่วไป | manual | 5d | 2023-01-19 | 2023-01-23 |  |  |  | 2023-01-19 | 2023-01-23 | 5d | 2023-01-19 | 2023-01-23 |  |  |  |  |  |  |
| 50 | 8.3.2 | พัฒนาหน้าการใช้งานสำหรับนักศึกษา | manual | 5d | 2023-01-27 | 2023-01-31 |  |  |  | 2023-01-27 | 2023-01-31 | 5d | 2023-01-27 | 2023-01-31 |  |  |  |  |  |  |
| 51 | 8.3.3 | พัฒนาหน้าการใช้งานสำหรับกรรมการหลักสูตร | manual | 5d | 2023-02-03 | 2023-02-07 |  |  |  | 2023-02-03 | 2023-02-07 | 5d | 2023-02-03 | 2023-02-07 |  |  |  |  |  |  |

| ID | WBS | Task | Type | Duration | Start | Finish | Predecessors | Complete | Remaining | Baseline start | Baseline finish | Baseline duration | Baseline 1 start | Baseline 1 finish | Total slack | Resources | Work | Actual work |
| --- | --- | --- | --- | --- | --- | --- | --- | --- | --- | --- | --- | --- | --- | --- | --- | --- | --- | --- |
| 52 | 8.4 | **ทดสอบการทำงานร่วมกัน** |  | 13d | 2023-02-08 | 2023-02-20 |  |  |  |  |  |  |  |  | 0d |  | 10h |  |
| 53 | 8.4.1 | ทดสอบการทำงาน Backend กับ Model | manual | 2d | 2023-02-08 | 2023-02-09 |  |  |  | 2023-02-08 | 2023-02-09 | 2d | 2023-02-08 | 2023-02-09 |  | 62010465 | 4h |  |
| 54 | 8.4.2 | ทดสอบการทำงาน Frontend กับ Backend | manual | 2d | 2023-02-14 | 2023-02-15 |  |  |  | 2023-02-14 | 2023-02-15 | 2d | 2023-02-14 | 2023-02-15 |  | 62010299 | 4h |  |
| 55 | 8.4.3 | ทดสอบการทำงานทั้งหมด | manual | 1d | 2023-02-20 | 2023-02-20 | 53, 54 |  |  | 2023-02-20 | 2023-02-20 | 1d | 2023-02-20 | 2023-02-20 |  | 62010299 [50%]; 62010465 [50%] | 2h |  |
| 56 | 8.5 | **Deploy Production** |  | 23d | 2023-02-21 | 2023-03-15 |  |  |  |  |  |  |  |  | 0d |  | 56h |  |
| 57 | 8.5.1 | Deploy Django | manual | 5d | 2023-02-21 | 2023-02-25 |  |  |  | 2023-02-21 | 2023-02-25 | 5d | 2023-02-21 | 2023-02-25 |  | 62010465 | 10h |  |
| 58 | 8.5.2 | Deploy React | manual | 5d | 2023-02-21 | 2023-02-25 |  |  |  | 2023-02-21 | 2023-02-25 | 5d | 2023-02-21 | 2023-02-25 |  | 62010465 | 10h |  |
| 59 | 8.5.3 | ทดสอบการทำงาน Backend กับ Model (Deploy) | manual | 4d | 2023-02-26 | 2023-03-01 | 57 |  |  | 2023-02-26 | 2023-03-01 | 4d | 2023-02-26 | 2023-03-01 |  | 62010465 | 8h |  |
| 60 | 8.5.4 | ทดสอบการทำงาน Frontend กับ Backend (Deploy) | manual | 4d | 2023-02-26 | 2023-03-01 | 57, 58 |  |  | 2023-02-26 | 2023-03-01 | 4d | 2023-02-26 | 2023-03-01 |  | 62010299 | 8h |  |
| 61 | 8.5.5 | ทดสอบการทำงานทั้งหมด | manual | 2d | 2023-03-02 | 2023-03-03 | 59, 60 |  |  | 2023-03-02 | 2023-03-03 | 2d | 2023-03-02 | 2023-03-03 |  | 62010299 [50%]; 62010465 [50%] | 4h |  |
| 62 | 8.5.6 | พัฒนาระบบ CI/CD | manual | 8d | 2023-03-08 | 2023-03-15 | 61 |  |  | 2023-03-08 | 2023-03-10 | 3d | 2023-03-08 | 2023-03-10 |  | 62010299 [50%]; 62010465 [50%] | 16h |  |
| 63 | 9 | **สรุปผลทำ ปริญญานิพนธ์** |  | 227d | 2022-08-01 A | 2023-03-15 |  | 40% | 135.46d |  |  |  |  |  |  |  | 404h | 166.5h |
| 64 | 9.1 | รายงานสำหรับ Project 1 | manual | 107d | 2022-08-01 A | 2022-11-15 |  | 75% | 26.75d | 2022-11-24 | 2022-12-05 | 12d | 2022-11-24 | 2022-12-05 |  | 62010299 [50%]; 62010465 [50%] | 220h | 166.5h |
| 65 | 9.2 | รายงานสำหรับ Project 2 | manual | 63d | 2022-12-15 | 2023-02-15 |  |  |  | 2023-03-08 | 2023-03-15 | 8d | 2023-03-08 | 2023-03-15 |  | 62010299 [50%]; 62010465 [50%] | 126h |  |
| 66 | 9.3 | รวมรายงาน | manual | 29d | 2023-02-15 | 2023-03-15 |  |  |  | 2023-03-15 | 2023-03-23 | 9d | 2023-03-15 | 2023-03-23 |  | 62010299 [50%]; 62010465 [50%] | 58h |  |
